How a schedule from an exported table changed from version to version. A marks actual dates.

## Version 1 (saved 2026-10-13)

| ID | Task | Start | Finish |
| --- | --- | --- | --- |
| general-meeting-all-members | General meeting — all members | 2026-09-04 | 2026-12-12 |
| senior-design-block-a | Senior design — block A | 2026-09-04 | 2026-12-12 |
| ee-senior-design | EE senior design | 2026-09-03 | 2026-12-10 |
| me-senior-design-2 | ME senior design #2 | 2026-09-04 | 2026-12-12 |
| advisor-sync-dr-wang | Advisor sync — Dr. Wang | 2026-09-08 | 2026-12-12 |
| off-road-targets-read-the-requirement | Off-Road Targets — read the requirement | 2026-09-02 | 2026-09-11 |
| off-road-targets-battery-and-mass-angle | Off-Road Targets — battery and mass angle | 2026-09-02 | 2026-09-11 |
| off-road-targets-packaging-and-geometry | Off-Road Targets — packaging and geometry | 2026-09-02 | 2026-09-11 |
| baseline-vehicle-testing-read-the-requirement | Baseline Vehicle Testing — read the requirement | 2026-09-02 | 2026-09-11 |
| pit-requirements-read-all-seven-components | PIT requirements — read all seven components | 2026-09-02 | 2026-09-11 |
| read-vdr-rev-0-end-to-end | Read VDR Rev 0 end to end | 2026-09-01 | 2026-09-11 |
| questions-to-the-organizers | Questions to the organizers | 2026-09-01 | 2026-09-08 |
| oversee-all-stla-deliverables | Oversee all STLA deliverables | 2026-09-01 | 2027-06-30 |
| name-all-fourteen-required-roles | Name all fourteen required roles | 2026-09-01 | 2026-09-17 |
| email-dr-wang-siemens-licence-and-training | Email Dr. Wang — Siemens licence and training | 2026-09-04 |  |
| fall-workshop-registration-closes | Fall Workshop registration closes | 2026-09-04 |  |
| rev-1-releases-re-baseline | Rev 1 releases — re-baseline | 2026-09-04 | 2026-09-09 |
| team-structure-funded-position-applications | Team structure + funded position applications | 2026-09-17 |  |
| signed-good-faith-agreements | Signed Good Faith Agreements | 2026-09-18 |  |
| student-leadership-council-applications | Student Leadership Council applications | 2026-09-18 |  |
| fall-workshop-atlanta | Fall Workshop, Atlanta | 2026-09-24 | 2026-09-26 |
| case-study-reflection | Case study → reflection | 2026-09-10 | 2026-10-08 |
| fall-workshop-case-study-reflection | Fall Workshop Case Study Reflection | 2026-10-08 |  |
| leadership-advisor-sponsor-review-2026-10-13 | Leadership review with advisors and sponsors | 2026-10-13 |  |
| team-roster-reconciliation | Team roster reconciliation | 2026-10-13 | 2026-10-14 |
| integrated-year-1-workplan | Integrated Year 1 Workplan | 2026-09-15 | 2026-11-05 |
| integrated-year-1-workplan-2 | Integrated Year 1 Workplan | 2026-11-12 |  |
| integrated-master-schedule | Integrated Master Schedule | 2026-09-08 | 2026-11-12 |
| university-stakeholder-meeting-preparation | University stakeholder meeting — preparation | 2027-01-28 |  |
| stakeholder-meeting-proof-of-execution | Stakeholder meeting — proof of execution | 2027-03-18 |  |
| project-status-update-assurance-review | Project Status Update & Assurance Review | 2027-04-08 |  |
| friday-workshops-matlab-track | Friday workshops — MATLAB track | 2026-09-04 | 2026-10-30 |
| friday-workshops-nx-track | Friday workshops — NX track | 2026-09-04 | 2026-10-30 |
| nx-onboarding-documents-materials | NX onboarding documents & materials | 2026-09-08 | 2026-10-10 |
| senior-design-scope-lock | Senior design scope lock | 2026-09-04 | 2026-09-18 |
| photo-video-and-headshots | Photo, video and headshots | 2026-09-11 |  |
| photo-session-2026-10-13 | Photo session — team photo, 10-second video, headshots | 2026-10-13 |  |
| fall-workshop-teach-backs | Fall Workshop teach-backs | 2026-10-02 |  |
| off-road-benchmarking-spreadsheet | Off-road benchmarking spreadsheet | 2026-09-08 | 2026-10-10 |
| off-road-performance-targets | Off-Road Performance Targets | 2026-09-15 | 2026-10-23 |
| freeze-red-team | Freeze & red team | 2026-10-23 | 2026-10-29 |
| off-road-performance-target-development | Off-Road Performance Target Development | 2026-10-29 |  |
| three-architecture-matrix | Three-architecture matrix | 2026-10-02 | 2027-03-15 |
| final-technical-report-itec-digest | Final Technical Report — ITEC digest | 2026-10-15 | 2026-12-12 |
| final-technical-report | Final Technical Report | 2027-03-31 |  |
| final-technical-report-abstract | Final Technical Report — abstract | 2027-01-11 |  |
| facilities-safety-readiness | Facilities & Safety Readiness | 2026-11-15 | 2027-01-14 |
| facilities-safety-readiness-2 | Facilities & Safety Readiness | 2027-01-21 |  |
| integrated-vehicle-architecture-selection | Integrated Vehicle Architecture Selection | 2027-04-01 |  |
| university-it-ticket-teamcenter-nx-licence | University IT ticket — Teamcenter / NX licence | 2026-09-03 | 2026-10-10 |
| cad-workflow-diagram-8-required-steps | CAD workflow diagram — 8 required steps | 2026-09-08 | 2026-10-14 |
| cad-onboarding-guide-2-pages | CAD onboarding guide — 2 pages | 2026-09-08 | 2026-10-14 |
| cad-demonstration-video-5-min | CAD demonstration video — 5 min | 2026-09-15 | 2026-10-14 |
| freeze-red-team-2 | Freeze & red team | 2026-09-22 | 2026-09-26 |
| cad-data-management-readiness | CAD Data Management Readiness | 2026-09-26 |  |
| cad-submission-freeze | CAD submission freeze | 2026-10-14 |  |
| cad-data-management-readiness-2 | CAD Data Management Readiness | 2026-10-15 |  |
| mass-budget-v1 | Mass budget v1 | 2026-09-08 | 2026-09-18 |
| rear-eaxle-benchmark-packaging | Rear eAxle benchmark & packaging | 2026-09-15 | 2026-12-18 |
| baseline-vehicle-testing-characterization | Baseline Vehicle Testing & Characterization | 2027-01-15 | 2027-05-06 |
| baseline-vehicle-testing-characterization-2 | Baseline Vehicle Testing & Characterization | 2027-05-06 |  |
| matlab-simulink-onramp-cohort | MATLAB & Simulink Onramp cohort | 2026-09-04 | 2026-09-18 |
| two-controller-compliance-check | Two-controller compliance check | 2026-09-11 | 2026-09-18 |
| pcm-onboarding-guide | PCM onboarding guide | 2026-09-20 | 2026-10-15 |
| onboard-training-runs-from-the-guide | Onboard training runs from the guide | 2026-10-16 | 2026-11-04 |
| pcm-tool-check | PCM Tool Check | 2026-11-05 |  |
| organizer-walkthrough-window | Organizer walkthrough window | 2026-11-09 | 2026-11-20 |
| virtual-vehicle-simulation-epa-cycles | Virtual Vehicle Simulation — EPA cycles | 2026-10-15 | 2026-12-04 |
| freeze-red-team-3 | Freeze & red team | 2026-12-04 | 2026-12-10 |
| virtual-vehicle-simulation | Virtual Vehicle Simulation | 2026-12-10 |  |

| ID | Task | Start | Finish |
| --- | --- | --- | --- |
| nx-cohort-cell-module-modeling | NX cohort & cell / module modeling | 2026-09-04 | 2026-10-15 |
| sponsored-cell-specs-module-options | Sponsored cell specs & module options | 2026-09-15 | 2026-11-01 |
| per-cell-c-rate-check | Per-cell C-rate check | 2026-09-23 |  |
| battery-performance-targets | Battery Performance Targets | 2026-10-01 | 2026-11-13 |
| freeze-red-team-4 | Freeze & red team | 2026-11-13 | 2026-11-19 |
| battery-performance-target-development | Battery Performance Target Development | 2026-11-19 |  |
| hv-work-permit-battery-build-book | HV work permit + Battery Build Book | 2026-10-01 | 2026-12-15 |
| marcom-manager-named | MarCom Manager named | 2026-09-17 |  |
| gate-1-team-program-identity | Gate 1: Team Program Identity | 2026-10-01 |  |
| green-garage-blog-1 | Green Garage Blog 1 | 2026-11-05 |  |
| team-webpage-content | Team Webpage Content | 2026-10-15 |  |
| gate-2-visual-identity | Gate 2: Visual Identity | 2026-10-22 |  |
| social-media-video-1 | Social Media Video 1 | 2026-12-03 |  |
| gate-3-brand-assets | Gate 3: Brand Assets | 2026-11-12 |  |
| studio-1-check-in-business-portfolio-review | Studio 1 Check-In: Business Portfolio Review | 2026-11-12 |  |
| gate-4-external-promotion-strategy | Gate 4: External Promotion Strategy | 2026-12-03 |  |
| studio-1-sdv-business-understanding | Studio 1: SDV Business Understanding | 2026-12-03 |  |
| social-media-data-collection | Social media data collection | 2026-09-05 | 2027-04-30 |
| outreach-data-collection | Outreach data collection | 2026-09-15 | 2027-04-30 |
| pit-customer-discovery-gate-1 | PIT: customer discovery & Gate 1 | 2026-12-04 | 2027-04-15 |
| budget-purchase-log | Budget & purchase log | 2026-09-25 | 2027-06-30 |
| micro-learning-1 | Micro-Learning 1: Market & Wedge Understanding | 2027-01-14 |  |
| green-garage-blog-2 | Green Garage Blog 2 | 2027-01-21 |  |
| open-exploration-problem-space-portfolio | Open Exploration: Problem Space Portfolio | 2027-02-04 |  |
| social-media-video-2 | Social Media Video 2 | 2027-02-11 |  |
| studio-2-check-in-customer-business-portfolio | Studio 2 Check-In: Customer / Business Portfolio Review | 2027-02-18 |  |
| micro-learning-2 | Micro-Learning 2: Customer Discovery | 2027-03-18 |  |
| studio-2-customer-discovery-wedge-validation | Studio 2: Customer Discovery and Wedge Validation | 2027-04-15 |  |
| social-media-data-submission | Social Media Data | 2027-05-07 |  |
| outreach-data-submission | Outreach Data | 2027-05-07 |  |
| asset-library-submission | Asset Library | 2027-05-07 |  |
| marcom-gate1-program-identity-milestone | Gate 1: Team Program Identity | 2026-10-01 | 2026-10-01 |
| marcom-ggb1-milestone | Green Garage Blog 1 | 2026-11-05 | 2026-11-05 |
| marcom-gate2-visual-identity-milestone | Gate 2: Visual Identity | 2026-10-22 | 2026-10-22 |
| marcom-smv1-milestone | Social Media Video 1 | 2026-12-03 | 2026-12-03 |
| marcom-gate3-brand-assets-milestone | Gate 3: Brand Assets | 2026-11-12 | 2026-11-12 |
| marcom-gate4-external-promotion-milestone | Gate 4: External Promotion Strategy | 2026-12-03 | 2026-12-03 |
| marcom-ggb2-milestone | Green Garage Blog 2 | 2027-01-21 | 2027-01-21 |
| marcom-smv2-milestone | Social Media Video 2 | 2027-02-11 | 2027-02-11 |
| marcom-year-end-logs-milestone | Social Media Data, Outreach Data and Asset Library | 2027-05-07 | 2027-05-07 |
| pit-studio1-checkin-milestone | Studio 1 Check-In: Business Portfolio Review | 2026-11-12 | 2026-11-12 |
| pit-studio1-milestone | Studio 1: SDV Business Understanding and Wedge Hypothesis Formation | 2026-12-03 | 2026-12-03 |
| pit-microlearning1-milestone | Micro-Learning 1: Market and Wedge Understanding | 2027-01-14 | 2027-01-14 |
| pit-open-exploration-milestone | Open Exploration: Problem Space Portfolio | 2027-02-04 | 2027-02-04 |
| pit-studio2-checkin-milestone | Studio 2 Check-in: Customer / Business Portfolio Review | 2027-02-18 | 2027-02-18 |
| pit-microlearning2-milestone | Micro-Learning 2: Customer Discovery | 2027-03-18 | 2027-03-18 |
| pit-studio2-milestone | Studio 2: Customer Discovery and Wedge Validation | 2027-04-15 | 2027-04-15 |

## Version 2 (saved 2026-10-13)

Note of the change: Calendar Gantt

Last finish stays 2027-06-30.

Added:

| ID | Task | Start |
| --- | --- | --- |
| career-expo-2026-10-21 | ECST Internship and Career Expo | 2026-10-21 |
| automobility-la-2026-11-19 | AutoMobility LA (LA Auto Show) | 2026-11-19 |
| year-1-competition | Year 1 Competition | 2027-05-21 |

## Version 3 (saved 2026-10-13)

Note of the change: Gantt Calendar

Last finish stays 2027-06-30.

Added:

| ID | Task | Start | Finish |
| --- | --- | --- | --- |
| me1-senior-design | ME1 — Rear eAxle & driveline integration | 2026-10-16 | 2026-12-11 |
| me2-senior-design | ME2 — Pack enclosure & thermal | 2026-10-16 | 2026-12-11 |
| ee1-senior-design | EE1 — HV distribution & protection | 2026-10-16 | 2026-12-11 |
| general-mechanical | General Mechanical | 2026-10-13 | 2026-12-08 |
| leadership-meeting | Leadership Meeting | 2026-10-13 | 2026-12-08 |
| ee2-senior-design | EE2 — Instrumentation & controls (Dr. Shahverdi) | 2026-10-13 | 2026-12-08 |

Removed: senior-design-block-a Senior design — block A; ee-senior-design EE senior design; me-senior-design-2 ME senior design #2

Changed:

| ID | Task | Finish | Other |
| --- | --- | --- | --- |
| general-meeting-all-members | General Meeting — all members | 2026-12-12 → 2026-12-11 (-1d) | was named General meeting — all members |

## Version 4 (saved 2026-11-02)

Note of the change: Rework on visuals

Last finish stays 2027-06-30.

Added:

| ID | Task | Start |
| --- | --- | --- |
| offroad-bootcamp | Offroad Bootcamp | 2027-03-31 |

Changed:

| ID | Task | Start | Finish | Other |
| --- | --- | --- | --- | --- |
| integrated-year-1-workplan | Integrated Year 1 Workplan |  | 2026-11-05 → 2026-11-10 (+5d) |  |
| integrated-year-1-workplan-2 | Integrated Year 1 Workplan | 2026-11-12 → 2026-11-17 (+5d) |  |  |
| integrated-master-schedule | Integrated Master Schedule |  | 2026-11-12 → 2026-11-17 (+5d) |  |
| integrated-vehicle-architecture-selection | Integrated Vehicle Architecture Selection | 2027-04-01 → 2027-03-25 (-7d) |  |  |
| battery-performance-targets | Battery Performance Targets |  | 2026-11-13 → 2026-11-26 (+13d) |  |
| freeze-red-team-4 | Freeze & red team | 2026-11-13 → 2026-11-26 (+13d) | 2026-11-19 → 2026-12-03 (+14d) |  |
| battery-performance-target-development | Battery Performance Target Development | 2026-11-19 → 2026-12-03 (+14d) |  |  |
| green-garage-blog-1 | Green Garage Blog 1 | 2026-11-05 → 2026-11-12 (+7d) |  |  |
| micro-learning-1 | Studio 1: Post-Reflection |  |  | was named Micro-Learning 1: Market & Wedge Understanding |
| micro-learning-2 | Studio 2: Mid-Reflection |  |  | was named Micro-Learning 2: Customer Discovery |
| marcom-ggb1-milestone | Green Garage Blog 1 | 2026-11-05 → 2026-11-12 (+7d) | 2026-11-05 → 2026-11-12 (+7d) |  |
| pit-microlearning1-milestone | Studio 1: Post-Reflection |  |  | was named Micro-Learning 1: Market and Wedge Understanding |
| pit-microlearning2-milestone | Studio 2: Mid-Reflection |  |  | was named Micro-Learning 2: Customer Discovery |

## Version 5 (saved 2026-11-03)

Note of the change: Scorecards

Last finish stays 2027-06-30.

Added:

| ID | Task | Start | Finish |
| --- | --- | --- | --- |
| marcom-meeting | MarCom — General Requirements & media | 2026-11-04 | 2026-12-09 |

Changed:

| ID | Task | Other |
| --- | --- | --- |
| me1-senior-design | ME1 — HV dune buggy conversion | was named ME1 — Rear eAxle & driveline integration |
| me2-senior-design | ME2 — RC-scale electric drivetrain | was named ME2 — Pack enclosure & thermal |
| ee1-senior-design | EE1 — Instrumentation & CAN | was named EE1 — HV distribution & protection |
| ee2-senior-design | EE2 — Powertrain simulation & controls | was named EE2 — Instrumentation & controls (Dr. Shahverdi) |

## Version 6 (saved 2026-11-16)

Note of the change: update risks

Last finish stays 2027-06-30.

Added:

| ID | Task | Start | Finish |
| --- | --- | --- | --- |
| pm-handoff-henry | PM handoff to Henry Hall | 2026-12-11 |  |
| spring-vse-owner-named | Spring VSE owner named | 2026-12-11 |  |
| fs-coordinator-named | Facilities & Safety Coordinator named | 2026-12-11 |  |
| ti-board-order | TI board ordered | 2026-11-20 |  |
| siemens-server-access | Siemens server access | 2026-11-16 | 2027-01-20 |
| vehicle-delivery-window | Vehicle delivery and vehicle-use approval | 2027-01-04 | 2027-01-29 |
| team-training-spring | Team training: CAN, Simulink, CAD; Makerspace and Circuitspace access | 2027-01-21 | 2027-03-25 |

Changed:

| ID | Task | Start | Finish | Other |
| --- | --- | --- | --- | --- |
| final-technical-report-itec-digest | Final Technical Report — ASME abstract and paper | 2026-10-15 → 2026-12-14 (+60d) | 2026-12-12 → 2027-03-26 (+104d) | was named Final Technical Report — ITEC digest |

## Version 7 (saved 2026-11-16)

Note of the change: Gantt Chart Update

Last finish stays 2027-06-30.

Changed:

| ID | Task | Start | Other |
| --- | --- | --- | --- |
| team-training-spring | Team training: CAN, Simulink, CAD, shop access |  | was named Team training: CAN, Simulink, CAD; Makerspace and Circuitspace access |
| freeze-red-team-3 | Team check, fix and finish | 2026-12-04 → 2026-12-01 (-3d) | was named Freeze & red team |
| freeze-red-team-4 | Team check, fix and finish | 2026-11-26 → 2026-11-20 (-6d) | was named Freeze & red team |
